# Daher Test 563

Schedule from MS Project XML, 2026-06-15 to 2026-11-24, A marks actual dates.

## Calendars

- Standard: Mon-Fri 08:00-12:00, 13:00-17:00; Sat-Sun off.

## Resources

| Resource |
| --- |
| PMCC Site Crew |
| Excavation Sub |
| Stone Supplier |
| MEP Sub |

## Schedule

| ID | WBS | Task | Type | Duration | Start | Finish | Predecessors | Complete | Actual finish | Baseline start | Baseline finish | Baseline duration | Resources |
| --- | --- | --- | --- | --- | --- | --- | --- | --- | --- | --- | --- | --- | --- |
| 1 | 1 | **Mobilization** |  | 8d | 2026-06-15 A | 2026-06-24 A |  | 100% |  | 2026-06-15 | 2026-06-24 | 8d |  |
| 2 | 1.1 | Site establishment & hoarding |  | 5d | 2026-06-15 A | 2026-06-19 A |  | 100% |  | 2026-06-15 | 2026-06-19 | 5d | PMCC Site Crew |
| 3 | 1.2 | Temporary power & water |  | 5d | 2026-06-18 A | 2026-06-24 A | 2SS+3d | 100% |  | 2026-06-18 | 2026-06-24 | 5d |  |
| 4 | 2 | **Enabling works** |  | 22d | 2026-06-22 A | 2026-07-21 A |  | 100% |  | 2026-06-22 | 2026-07-21 | 22d |  |
| 5 | 2.1 | Demolition of old terraces |  | 7d | 2026-06-22 A | 2026-06-30 A | 2 | 100% |  | 2026-06-22 | 2026-06-30 | 7d | Excavation Sub |
| 6 | 2.2 | Bulk excavation |  | 10d | 2026-07-01 A | 2026-07-14 | 5 | 100% | 2026-07-15 | 2026-07-01 | 2026-07-14 | 10d | Excavation Sub |
| 7 | 2.3 | Shoring & retaining wall |  | 10d | 2026-07-08 A | 2026-07-21 A | 6SS+5d | 100% |  | 2026-07-08 | 2026-07-21 | 10d | Excavation Sub |
| 8 | 2.4 | Garden retaining wall repair |  | 5d | 2026-08-20 | 2026-08-26 | 7 |  |  | 2026-08-20 | 2026-08-26 | 5d |  |
| 9 | 3 | **Substructure** |  | 15d | 2026-07-22 A | 2026-08-11 |  | 62% |  | 2026-07-22 | 2026-08-11 | 15d |  |
| 10 | 3.1 | Foundations rebar & formwork |  | 5d | 2026-07-22 A | 2026-07-28 A | 7 | 100% |  | 2026-07-22 | 2026-07-28 | 5d | PMCC Site Crew |
| 11 | 3.2 | Foundation concrete pour |  | 2d | 2026-07-29 A | 2026-07-30 A | 10 | 100% |  | 2026-07-29 | 2026-07-30 | 2d | PMCC Site Crew |
| 12 | 3.3 | Waterproofing & backfill |  | 5d | 2026-07-31 A | 2026-08-07 A | 11 | 100% |  | 2026-07-31 | 2026-08-07 | 5d | PMCC Site Crew |
| 13 | 3.4 | Ground slab on grade |  | 3d | 2026-08-07 | 2026-08-12 | 12 |  |  | 2026-08-07 | 2026-08-12 | 3d | PMCC Site Crew |
| 14 | 4 | **Superstructure** |  | 40d | 2026-08-05 A | 2026-09-29 |  | 4% |  | 2026-08-05 | 2026-09-29 | 40d |  |
| 15 | 4.1 | Basement 1 columns & walls |  | 5d | 2026-08-05 A | 2026-08-11 | 12SS+3d | 70% |  | 2026-08-05 | 2026-08-11 | 5d | PMCC Site Crew |
| 16 | 4.2 | Basement 1 slab |  | 5d | 2026-08-12 | 2026-08-18 | 15 |  |  | 2026-08-12 | 2026-08-18 | 5d | PMCC Site Crew |
| 17 | 4.3 | Ground floor columns |  | 5d | 2026-08-19 | 2026-08-25 | 16 |  |  | 2026-08-19 | 2026-08-25 | 5d |  |
| 18 | 4.4 | Ground floor slab |  | 5d | 2026-08-26 | 2026-09-01 | 17 |  |  | 2026-08-26 | 2026-09-01 | 5d |  |
| 19 | 4.5 | First floor structure |  | 10d | 2026-09-02 | 2026-09-15 | 18 |  |  | 2026-09-02 | 2026-09-15 | 10d |  |
| 20 | 4.6 | Roof structure & gables |  | 10d | 2026-09-16 | 2026-09-29 | 19 |  |  | 2026-09-16 | 2026-09-29 | 10d |  |
| 21 | 4.7 | Structure complete | milestone | 0d | 2026-09-29 | 2026-09-29 | 20 |  |  | 2026-09-29 | 2026-09-29 | 0d |  |
| 22 | 5 | **MEP rough-in** |  | 25d | 2026-08-12 | 2026-09-15 |  |  |  | 2026-08-12 | 2026-09-15 | 25d |  |
| 23 | 5.1 | Underground drainage |  | 5d | 2026-08-10 | 2026-08-14 | 12 |  |  | 2026-08-10 | 2026-08-14 | 5d | MEP Sub |
| 24 | 5.2 | Electrical sleeves & risers |  | 10d | 2026-08-19 | 2026-09-01 | 15 |  |  | 2026-08-19 | 2026-09-01 | 10d | MEP Sub |
| 25 | 5.3 | Plumbing risers |  | 10d | 2026-09-02 | 2026-09-15 | 24 |  |  | 2026-09-02 | 2026-09-15 | 10d | MEP Sub |

| ID | WBS | Task | Type | Duration | Start | Finish | Predecessors | Baseline start | Baseline finish | Baseline duration | Resources |
| --- | --- | --- | --- | --- | --- | --- | --- | --- | --- | --- | --- |
| 26 | 6 | **Facade** |  | 54d | 2026-08-13 | 2026-10-27 |  | 2026-08-13 | 2026-10-27 | 54d |  |
| 27 | 6.1 | Stone sample panel approval |  | 5d | 2026-08-21 | 2026-08-27 |  | 2026-08-21 | 2026-08-27 | 5d | Stone Supplier |
| 28 | 6.2 | Stone cladding |  | 20d | 2026-09-30 | 2026-10-27 | 20, 27 | 2026-09-30 | 2026-10-27 | 20d | Stone Supplier |
| 29 | 7 | **Finishes** |  | 25d | 2026-10-07 | 2026-11-10 |  | 2026-10-07 | 2026-11-10 | 25d |  |
| 30 | 7.1 | Internal partitions |  | 10d | 2026-10-07 | 2026-10-20 | 20FS+5d | 2026-10-07 | 2026-10-20 | 10d |  |
| 31 | 7.2 | Marble & tiling |  | 10d | 2026-10-28 | 2026-11-10 | 28, 30 | 2026-10-28 | 2026-11-10 | 10d | Stone Supplier |
| 32 | 8 | **Testing & commissioning** |  | 5d | 2026-11-11 | 2026-11-17 |  | 2026-11-11 | 2026-11-17 | 5d |  |
| 33 | 8.1 | MEP testing & commissioning |  | 5d | 2026-11-11 | 2026-11-17 | 31, 25 | 2026-11-11 | 2026-11-17 | 5d | MEP Sub |
| 34 | 9 | **Handover** |  | 5d | 2026-11-18 | 2026-11-24 |  | 2026-11-18 | 2026-11-24 | 5d |  |
| 35 | 9.1 | Snagging & handover |  | 5d | 2026-11-18 | 2026-11-24 | 33 | 2026-11-18 | 2026-11-24 | 5d |  |
| 36 | 9.2 | Handover | milestone | 0d | 2026-11-24 | 2026-11-24 | 35 | 2026-11-24 | 2026-11-24 | 0d |  |
