# BCHARREH-TEST

Schedule from MS Project XML, 2026-03-02 to 2026-12-02, status date 2026-07-28, A marks actual dates.

## Schedule

| ID | WBS | Task | Type | Duration | Start | Finish | Predecessors | Complete | Remaining | Actual start | Actual finish | Total slack | Calendar |
| --- | --- | --- | --- | --- | --- | --- | --- | --- | --- | --- | --- | --- | --- |
| 1 | EN-100 | Site establishment & scaffolding — House A |  | 10d | 2026-03-02 A | 2026-03-13 A |  | 100% |  |  |  |  | 6 Day Site Calendar |
| 2 | EN-110 | Scaffolding — House B |  | 10d | 2026-03-16 A | 2026-03-27 |  | 100% |  |  | 2026-03-31 |  | 6 Day Site Calendar |
| 3 | RF-200 | Roof strip & timber survey — House A |  | 15d | 2026-03-16 A | 2026-04-03 | 1 | 100% |  |  | 2026-04-08 |  | 6 Day Site Calendar |
| 4 | RF-210 | Roof re-tile — House A |  | 20d | 2026-04-06 | 2026-05-01 | 3 | 100% |  | 2026-04-09 | 2026-05-08 |  | 6 Day Site Calendar |
| 5 | RF-220 | Roof strip — House B |  | 15d | 2026-04-06 | 2026-04-24 | 2 | 100% |  | 2026-04-10 | 2026-05-01 |  | 6 Day Site Calendar |
| 6 | RF-230 | Roof re-tile — House B |  | 20d | 2026-04-27 | 2026-05-22 | 5 | 100% |  | 2026-05-04 | 2026-06-05 |  | 6 Day Site Calendar |
| 7 | ST-300 | Stone repairs & repointing — House A |  | 50d | 2026-04-06 | 2026-06-12 | 4SS | 100% |  | 2026-04-13 | 2026-06-26 |  | 6 Day Site Calendar |
| 8 | ST-310 | Stone repairs & repointing — House B |  | 40d | 2026-05-25 | 2026-07-17 | 6SS | 65% | 10d | 2026-06-08 |  | -3d | 6 Day Site Calendar |
| 9 | SR-400 | Structural steel ties & new lintels — House A |  | 20d | 2026-05-04 | 2026-05-29 | 7SS+10d | 100% |  | 2026-05-11 | 2026-06-05 |  | 6 Day Site Calendar |
| 10 | JN-500 | Joinery restoration in workshop (windows & doors) |  | 60d | 2026-04-13 A | 2026-07-03 |  | 80% | 8d |  |  | 1d | 6 Day Site Calendar |
| 11 | JN-510 | Joinery installation — House A |  | 20d | 2026-07-06 | 2026-07-31 | 10 |  |  |  |  | 1d | 6 Day Site Calendar |
| 12 | JN-520 | Joinery installation — House B |  | 20d | 2026-08-10 | 2026-09-04 | 11 |  |  |  |  | 3d | 6 Day Site Calendar |
| 13 | ME-600 | MEP first fix — House A |  | 30d | 2026-06-08 A | 2026-07-10 | 4 | 70% | 9d |  |  | 6d | 6 Day Site Calendar |
| 14 | ME-610 | MEP first fix — House B |  | 30d | 2026-08-03 | 2026-09-11 | 6 |  |  |  |  | -3d | 6 Day Site Calendar |
| 15 | PL-700 | Lime plaster & render — House A |  | 30d | 2026-07-13 | 2026-08-21 | 13, 11 |  |  |  |  | 0d | 6 Day Site Calendar |
| 16 | PL-710 | Lime plaster & render — House B |  | 30d | 2026-09-14 | 2026-10-23 | 14 |  |  |  |  | -3d | 6 Day Site Calendar |
| 17 | FN-800 | Internal finishes — House A |  | 30d | 2026-08-24 | 2026-10-02 | 15 |  |  |  |  | 3d | 6 Day Site Calendar |
| 18 | FN-810 | Internal finishes — House B |  | 25d | 2026-10-26 | 2026-11-27 | 16 |  |  |  |  | -3d | 6 Day Site Calendar |
| 19 | EX-900 | External works, terraces & drainage |  | 40d | 2026-09-07 | 2026-10-30 |  |  |  |  |  | 8d | 6 Day Site Calendar |
| 20 | PC-999 | Practical completion | milestone | 0d | 2026-12-02 | 2026-12-02 | 18, 17, 19 |  |  |  |  | -3d | 6 Day Site Calendar |
